# My_Trey_Slide_Presenter_Tracking

How a schedule from MS Project changed from version to version. A marks actual dates.

## Version 1 (saved 2018-06-21, file Activity 4.1 Viewing Critical Path Information for a Project-My_Trey_Slide_Presenter_Tracking.mpp)

Note of the change: learm-format bar style,critical path , Base line,slippagetracking gantt chart view

| ID | WBS | Task | Duration | Start | Finish | Predecessors | Total float | Constraint |
| --- | --- | --- | --- | --- | --- | --- | --- | --- |
| 1 | 1 | **Phase 1 - High-Level Planning** | 14d | 2016-08-01 | 2016-08-18 |  | 1d |  |
| 2 |  | Determine sales objectives | 1d | 2016-08-01 | 2016-08-01 |  | 1d |  |
| 3 |  | Define launch goals (launch timing and publicity objectives) | 1d | 2016-08-02 | 2016-08-02 | 2 | 1d |  |
| 4 | 1.3 | **Establish Launch Budget** | 12d | 2016-08-03 | 2016-08-18 |  | 1d |  |
| 5 |  | Identify budget requirements | 1d | 2016-08-03 | 2016-08-03 | 3 | 1d |  |
| 6 |  | Obtain launch budget approval | 5d | 2016-08-11 | 2016-08-18 | 5FS+5d | 1d |  |
| 7 |  | High-Level Planning Complete | 0d | 2016-08-18 | 2016-08-18 | 6 | 1d |  |
| 8 | 3 | **Phase 2 - Detailed Planning** | 13d | 2016-08-19 | 2016-09-07 |  | 0d |  |
| 9 |  | Kickoff product launch | 1d | 2016-08-19 | 2016-08-19 | 7 | 1d |  |
| 10 | 3.2 | **Marketing** | 3d | 2016-08-22 | 2016-08-24 |  | 0d |  |
| 11 |  | Define press release requirements | 1d | 2016-08-22 | 2016-08-22 | 9 | 2d |  |
| 12 |  | Define sales presentations | 2d | 2016-08-23 | 2016-08-24 | 9 | 0d | start no earlier than 2016-08-23 |
| 13 |  | Define product specification literature | 2d | 2016-08-22 | 2016-08-23 | 9 | 1d |  |
| 14 |  | Define internal communication needs | 1d | 2016-08-22 | 2016-08-22 | 9 | 2d |  |
| 15 | 3.3 | **Engineering** | 2d | 2016-08-25 | 2016-08-26 |  | 0d |  |
| 16 |  | Align product release timing with marketing plan | 2d | 2016-08-25 | 2016-08-26 | 14, 11, 12, 13 | 0d |  |
| 17 | 3.4 | **Manufacturing** | 2d | 2016-08-29 | 2016-08-30 |  | 0d |  |
| 18 |  | Prepare for volume manufacturing according to sales goals | 2d | 2016-08-29 | 2016-08-30 | 16 | 0d |  |
| 19 | 3.5 | **Sales** | 2d | 2016-08-31 | 2016-09-01 |  | 0d |  |
| 20 |  | Plan sales force staffing and training to support sales goals | 2d | 2016-08-31 | 2016-09-01 | 18 | 0d |  |
| 21 | 3.6 | **Product Support** | 3d | 2016-09-02 | 2016-09-07 |  | 0d |  |
| 22 |  | Plan team staffing to support sales goals | 3d | 2016-09-02 | 2016-09-07 | 20 | 0d |  |
| 23 |  | Detailed Planning Complete | 0d | 2016-09-07 | 2016-09-07 | 22 | 0d |  |
| 24 | 5 | **Phase 3 - Execution** | 55d | 2016-09-08 | 2016-11-24 |  | 0d |  |
| 25 | 5.1 | **Marketing** | 22d | 2016-09-08 | 2016-10-07 |  | 0d |  |
| 26 |  | Evaluate market and refine messaging | 1d | 2016-09-08 | 2016-09-08 | 23 | 0d |  |
| 27 |  | Create press releases | 2d | 2016-09-09 | 2016-09-12 | 26 | 26d |  |
| 28 |  | Create product specification literature | 5d | 2016-09-13 | 2016-09-19 | 27 | 26d |  |
| 29 |  | Create sales presentations | 5d | 2016-09-20 | 2016-09-26 | 28 | 26d |  |
| 30 |  | Create sales, field, and product support training | 5d | 2016-09-27 | 2016-10-03 | 29 | 26d |  |
| 31 |  | Update product forecasts based on market feedback and analysis | 2d | 2016-10-04 | 2016-10-05 | 30 | 26d |  |
| 32 |  | Update launch plan based on forecast | 2d | 2016-10-06 | 2016-10-07 | 31 | 66d |  |
| 33 | 5.2 | **Engineering** | 30d | 2016-09-08 | 2016-10-19 |  | 0d |  |
| 34 |  | Complete and test product | 30d | 2016-09-08 | 2016-10-19 | 26SS | 0d |  |
| 35 | 5.3 | **Manufacturing** | 25d | 2016-10-20 | 2016-11-24 |  | 0d |  |
| 36 |  | Create prototype products | 20d | 2016-10-20 | 2016-11-17 | 34 | 0d |  |
| 37 |  | Prepare pipeline | 5d | 2016-11-17 | 2016-11-24 | 36 | 0d |  |
| 38 | 5.4 | **Sales** | 2d | 2016-10-06 | 2016-10-07 |  | 26d |  |
| 39 |  | Establish sales channels | 2d | 2016-10-06 | 2016-10-07 | 31 | 26d |  |
| 40 | 5.5 | **Product Support** | 2d | 2016-10-10 | 2016-10-11 |  | 26d |  |
| 41 |  | Establish product support mechanisms | 2d | 2016-10-10 | 2016-10-11 | 39 | 26d |  |
| 42 |  | Execution Phase Complete | 0d | 2016-10-11 | 2016-10-11 | 41 | 26d |  |
| 43 | 7 | **Phase 4 - Release To Manufacture** | 64d | 2016-10-12 | 2017-01-10 |  | 0d |  |
| 44 | 7.1 | **Manufacturing** | 61d | 2016-10-12 | 2017-01-05 |  | 0d |  |
| 45 |  | Certify product | 5d | 2016-10-12 | 2016-10-18 | 42 | 26d |  |
| 46 |  | Manufacture the volume of product planned to meet sales objectives. | 30d | 2016-11-24 | 2017-01-05 | 45, 37 | 0d |  |
| 47 | 7.2 | **Sales** | 10d | 2016-11-17 | 2016-12-01 |  | 0d |  |
| 48 |  | Hire and train sales staff | 10d | 2016-11-17 | 2016-12-01 | 36SS+20d | 0d |  |
| 49 | 7.3 | **Product Support** | 10d | 2016-12-22 | 2017-01-05 |  | 0d |  |
| 50 |  | Hire and train product support personnel | 10d | 2016-12-22 | 2017-01-05 | 48FS+15d | 0d |  |
| 51 | 7.4 | **Final Quality Review** | 3d | 2017-01-05 | 2017-01-10 |  | 0d |  |
| 52 |  | Conduct final quality review | 3d | 2017-01-05 | 2017-01-10 | 50, 46 | 0d |  |
| 53 |  | Product Release Information Complete | 0d | 2017-01-10 | 2017-01-10 | 52 | 0d |  |
| 54 |  | Needed materials are on order or in stock. | 0d | 2017-01-10 | 2017-01-10 | 53 | 0d |  |
| 55 |  | Literature Complete | 0d | 2017-01-10 | 2017-01-10 | 54 | 0d |  |
| 56 |  | Training Complete | 0d | 2017-01-05 | 2017-01-05 | 48, 50 | 3d |  |
| 57 |  | Launch Product | 0d | 2017-01-10 | 2017-01-10 | 55, 56 | 0d |  |

## Version 2 (saved 2018-06-21, file Activity 4.2 Setting and Updating a Baseline-MY_Trey_Slide_Presenter_Tracking (1).mpp)

Note of the change: learm-format bar style,critical path , Base line,slippagetracking gantt chart view

Last finish stays 2017-01-10.

Changed:

| ID | Task | Other |
| --- | --- | --- |
| 1 | **Phase 1 - High-Level Planning** | baseline start none → 2016-08-01; baseline finish none → 2016-08-18 |
| 2 | Determine sales objectives | baseline start none → 2016-08-01; baseline finish none → 2016-08-01 |
| 3 | Define launch goals (launch timing and publicity objectives) | baseline start none → 2016-08-02; baseline finish none → 2016-08-02 |
| 4 | **Establish Launch Budget** | baseline start none → 2016-08-03; baseline finish none → 2016-08-18 |
| 5 | Identify budget requirements | baseline start none → 2016-08-03; baseline finish none → 2016-08-03 |
| 6 | Obtain launch budget approval | baseline start none → 2016-08-11; baseline finish none → 2016-08-18 |
| 7 | High-Level Planning Complete | baseline start none → 2016-08-18; baseline finish none → 2016-08-18 |
| 8 | **Phase 2 - Detailed Planning** | baseline start none → 2016-08-19; baseline finish none → 2016-09-07 |
| 9 | Kickoff product launch | baseline start none → 2016-08-19; baseline finish none → 2016-08-19 |
| 10 | **Marketing** | baseline start none → 2016-08-22; baseline finish none → 2016-08-24 |
| 11 | Define press release requirements | baseline start none → 2016-08-22; baseline finish none → 2016-08-22 |
| 12 | Define sales presentations | baseline start none → 2016-08-23; baseline finish none → 2016-08-24 |
| 13 | Define product specification literature | baseline start none → 2016-08-22; baseline finish none → 2016-08-23 |
| 14 | Define internal communication needs | baseline start none → 2016-08-22; baseline finish none → 2016-08-22 |
| 15 | **Engineering** | baseline start none → 2016-08-25; baseline finish none → 2016-08-26 |
| 16 | Align product release timing with marketing plan | baseline start none → 2016-08-25; baseline finish none → 2016-08-26 |
| 17 | **Manufacturing** | baseline start none → 2016-08-29; baseline finish none → 2016-08-30 |
| 18 | Prepare for volume manufacturing according to sales goals | baseline start none → 2016-08-29; baseline finish none → 2016-08-30 |
| 19 | **Sales** | baseline start none → 2016-08-31; baseline finish none → 2016-09-01 |
| 20 | Plan sales force staffing and training to support sales goals | baseline start none → 2016-08-31; baseline finish none → 2016-09-01 |
| 21 | **Product Support** | baseline start none → 2016-09-02; baseline finish none → 2016-09-07 |
| 22 | Plan team staffing to support sales goals | baseline start none → 2016-09-02; baseline finish none → 2016-09-07 |
| 23 | Detailed Planning Complete | baseline start none → 2016-09-07; baseline finish none → 2016-09-07 |
| 24 | **Phase 3 - Execution** | baseline start none → 2016-09-08; baseline finish none → 2016-11-24 |
| 25 | **Marketing** | baseline start none → 2016-09-08; baseline finish none → 2016-10-07 |
| 26 | Evaluate market and refine messaging | baseline start none → 2016-09-08; baseline finish none → 2016-09-08 |
| 27 | Create press releases | baseline start none → 2016-09-09; baseline finish none → 2016-09-12 |
| 28 | Create product specification literature | baseline start none → 2016-09-13; baseline finish none → 2016-09-19 |
| 29 | Create sales presentations | baseline start none → 2016-09-20; baseline finish none → 2016-09-26 |
| 30 | Create sales, field, and product support training | baseline start none → 2016-09-27; baseline finish none → 2016-10-03 |
| 31 | Update product forecasts based on market feedback and analysis | baseline start none → 2016-10-04; baseline finish none → 2016-10-05 |
| 32 | Update launch plan based on forecast | baseline start none → 2016-10-06; baseline finish none → 2016-10-07 |
| 33 | **Engineering** | baseline start none → 2016-09-08; baseline finish none → 2016-10-19 |
| 34 | Complete and test product | baseline start none → 2016-09-08; baseline finish none → 2016-10-19 |
| 35 | **Manufacturing** | baseline start none → 2016-10-20; baseline finish none → 2016-11-24 |
| 36 | Create prototype products | baseline start none → 2016-10-20; baseline finish none → 2016-11-17 |
| 37 | Prepare pipeline | baseline start none → 2016-11-17; baseline finish none → 2016-11-24 |
| 38 | **Sales** | baseline start none → 2016-10-06; baseline finish none → 2016-10-07 |
| 39 | Establish sales channels | baseline start none → 2016-10-06; baseline finish none → 2016-10-07 |
| 40 | **Product Support** | baseline start none → 2016-10-10; baseline finish none → 2016-10-11 |
| 41 | Establish product support mechanisms | baseline start none → 2016-10-10; baseline finish none → 2016-10-11 |
| 42 | Execution Phase Complete | baseline start none → 2016-10-11; baseline finish none → 2016-10-11 |
| 43 | **Phase 4 - Release To Manufacture** | baseline start none → 2016-10-12; baseline finish none → 2017-01-10 |
| 44 | **Manufacturing** | baseline start none → 2016-10-12; baseline finish none → 2017-01-05 |
| 45 | Certify product | baseline start none → 2016-10-12; baseline finish none → 2016-10-18 |
| 46 | Manufacture the volume of product planned to meet sales objectives. | baseline start none → 2016-11-24; baseline finish none → 2017-01-05 |
| 47 | **Sales** | baseline start none → 2016-11-17; baseline finish none → 2016-12-01 |
| 48 | Hire and train sales staff | baseline start none → 2016-11-17; baseline finish none → 2016-12-01 |
| 49 | **Product Support** | baseline start none → 2016-12-22; baseline finish none → 2017-01-05 |
| 50 | Hire and train product support personnel | baseline start none → 2016-12-22; baseline finish none → 2017-01-05 |
| 51 | **Final Quality Review** | baseline start none → 2017-01-05; baseline finish none → 2017-01-10 |
| 52 | Conduct final quality review | baseline start none → 2017-01-05; baseline finish none → 2017-01-10 |
| 53 | Product Release Information Complete | baseline start none → 2017-01-10; baseline finish none → 2017-01-10 |
| 54 | Needed materials are on order or in stock. | baseline start none → 2017-01-10; baseline finish none → 2017-01-10 |
| 55 | Literature Complete | baseline start none → 2017-01-10; baseline finish none → 2017-01-10 |
| 56 | Training Complete | baseline start none → 2017-01-05; baseline finish none → 2017-01-05 |
| 57 | Launch Product | baseline start none → 2017-01-10; baseline finish none → 2017-01-10 |

## Version 3 (data date 2016-08-05, saved 2018-06-21, file Activity 4.3 Updating Task Progress-My_Trey_Slide_Presenter_Tracking_b.mpp)

Note of the change: learm-format bar style,critical path , Base line,slippagetracking gantt chart view

Last finish 2017-01-10 → 2017-01-11 (+1d). Complete tasks 0 → 1.

Changed:

| ID | Task | Start | Finish | Duration | Complete | Total float |
| --- | --- | --- | --- | --- | --- | --- |
| 1 | **Phase 1 - High-Level Planning** | 2016-08-01 A | 2016-08-18 → 2016-08-22 (+4d) | 14d → 16d | 0% → 31% | 1d → 0d |
| 2 | Determine sales objectives | 2016-08-01 A | 2016-08-01 A |  | 0% → 100% | 1d → none |
| 3 | Define launch goals (launch timing and publicity objectives) | 2016-08-02 → 2016-08-03 A (+1d) | 2016-08-02 → 2016-08-04 (+2d) | 1d → 2d | 0% → 50% | 1d → 0.75d |
| 4 | **Establish Launch Budget** | 2016-08-03 → 2016-08-05 A (+2d) | 2016-08-18 → 2016-08-22 (+4d) |  | 0% → 13% | 1d → none |
| 5 | Identify budget requirements | 2016-08-03 → 2016-08-05 A (+2d) | 2016-08-03 → 2016-08-05 (+2d) |  | 0% → 75% | 1d → 0d |
| 6 | Obtain launch budget approval | 2016-08-11 → 2016-08-15 (+4d) | 2016-08-18 → 2016-08-22 (+4d) |  |  | 1d → 0d |
| 7 | High-Level Planning Complete | 2016-08-18 → 2016-08-22 (+4d) | 2016-08-18 → 2016-08-22 (+4d) |  |  | 1d → 0d |
| 8 | **Phase 2 - Detailed Planning** | 2016-08-19 → 2016-08-23 (+4d) | 2016-09-07 → 2016-09-08 (+1d) | 13d → 12d |  |  |
| 9 | Kickoff product launch | 2016-08-19 → 2016-08-23 (+4d) | 2016-08-19 → 2016-08-23 (+4d) |  |  | 1d → 0d |
| 10 | **Marketing** | 2016-08-22 → 2016-08-24 (+2d) | 2016-08-24 → 2016-08-25 (+1d) | 3d → 2d |  |  |
| 11 | Define press release requirements | 2016-08-22 → 2016-08-24 (+2d) | 2016-08-22 → 2016-08-24 (+2d) |  |  | 2d → 1d |
| 12 | Define sales presentations | 2016-08-23 → 2016-08-24 (+1d) | 2016-08-24 → 2016-08-25 (+1d) |  |  |  |
| 13 | Define product specification literature | 2016-08-22 → 2016-08-24 (+2d) | 2016-08-23 → 2016-08-25 (+2d) |  |  | 1d → 0d |
| 14 | Define internal communication needs | 2016-08-22 → 2016-08-24 (+2d) | 2016-08-22 → 2016-08-24 (+2d) |  |  | 2d → 1d |
| 15 | **Engineering** | 2016-08-25 → 2016-08-26 (+1d) | 2016-08-26 → 2016-08-29 (+3d) |  |  |  |
| 16 | Align product release timing with marketing plan | 2016-08-25 → 2016-08-26 (+1d) | 2016-08-26 → 2016-08-29 (+3d) |  |  |  |
| 17 | **Manufacturing** | 2016-08-29 → 2016-08-30 (+1d) | 2016-08-30 → 2016-08-31 (+1d) |  |  |  |
| 18 | Prepare for volume manufacturing according to sales goals | 2016-08-29 → 2016-08-30 (+1d) | 2016-08-30 → 2016-08-31 (+1d) |  |  |  |
| 19 | **Sales** | 2016-08-31 → 2016-09-01 (+1d) | 2016-09-01 → 2016-09-02 (+1d) |  |  |  |
| 20 | Plan sales force staffing and training to support sales goals | 2016-08-31 → 2016-09-01 (+1d) | 2016-09-01 → 2016-09-02 (+1d) |  |  |  |
| 21 | **Product Support** | 2016-09-02 → 2016-09-06 (+4d) | 2016-09-07 → 2016-09-08 (+1d) |  |  |  |
| 22 | Plan team staffing to support sales goals | 2016-09-02 → 2016-09-06 (+4d) | 2016-09-07 → 2016-09-08 (+1d) |  |  |  |
| 23 | Detailed Planning Complete | 2016-09-07 → 2016-09-08 (+1d) | 2016-09-07 → 2016-09-08 (+1d) |  |  |  |
| 24 | **Phase 3 - Execution** | 2016-09-08 → 2016-09-09 (+1d) | 2016-11-24 → 2016-11-25 (+1d) |  |  |  |
| 25 | **Marketing** | 2016-09-08 → 2016-09-09 (+1d) | 2016-10-07 → 2016-10-10 (+3d) |  |  |  |
| 26 | Evaluate market and refine messaging | 2016-09-08 → 2016-09-09 (+1d) | 2016-09-08 → 2016-09-09 (+1d) |  |  |  |
| 27 | Create press releases | 2016-09-09 → 2016-09-12 (+3d) | 2016-09-12 → 2016-09-13 (+1d) |  |  |  |
| 28 | Create product specification literature | 2016-09-13 → 2016-09-14 (+1d) | 2016-09-19 → 2016-09-20 (+1d) |  |  |  |
| 29 | Create sales presentations | 2016-09-20 → 2016-09-21 (+1d) | 2016-09-26 → 2016-09-27 (+1d) |  |  |  |
| 30 | Create sales, field, and product support training | 2016-09-27 → 2016-09-28 (+1d) | 2016-10-03 → 2016-10-04 (+1d) |  |  |  |
| 31 | Update product forecasts based on market feedback and analysis | 2016-10-04 → 2016-10-05 (+1d) | 2016-10-05 → 2016-10-06 (+1d) |  |  |  |
| 32 | Update launch plan based on forecast | 2016-10-06 → 2016-10-07 (+1d) | 2016-10-07 → 2016-10-10 (+3d) |  |  |  |
| 33 | **Engineering** | 2016-09-08 → 2016-09-09 (+1d) | 2016-10-19 → 2016-10-20 (+1d) |  |  |  |
| 34 | Complete and test product | 2016-09-08 → 2016-09-09 (+1d) | 2016-10-19 → 2016-10-20 (+1d) |  |  |  |
| 35 | **Manufacturing** | 2016-10-20 → 2016-10-21 (+1d) | 2016-11-24 → 2016-11-25 (+1d) |  |  |  |
| 36 | Create prototype products | 2016-10-20 → 2016-10-21 (+1d) | 2016-11-17 → 2016-11-18 (+1d) |  |  |  |
| 37 | Prepare pipeline | 2016-11-17 → 2016-11-18 (+1d) | 2016-11-24 → 2016-11-25 (+1d) |  |  |  |
| 38 | **Sales** | 2016-10-06 → 2016-10-07 (+1d) | 2016-10-07 → 2016-10-10 (+3d) |  |  |  |
| 39 | Establish sales channels | 2016-10-06 → 2016-10-07 (+1d) | 2016-10-07 → 2016-10-10 (+3d) |  |  |  |
| 40 | **Product Support** | 2016-10-10 → 2016-10-11 (+1d) | 2016-10-11 → 2016-10-12 (+1d) |  |  |  |
| 41 | Establish product support mechanisms | 2016-10-10 → 2016-10-11 (+1d) | 2016-10-11 → 2016-10-12 (+1d) |  |  |  |
| 42 | Execution Phase Complete | 2016-10-11 → 2016-10-12 (+1d) | 2016-10-11 → 2016-10-12 (+1d) |  |  |  |
| 43 | **Phase 4 - Release To Manufacture** | 2016-10-12 → 2016-10-13 (+1d) | 2017-01-10 → 2017-01-11 (+1d) |  |  |  |
| 44 | **Manufacturing** | 2016-10-12 → 2016-10-13 (+1d) | 2017-01-05 → 2017-01-06 (+1d) |  |  |  |
| 45 | Certify product | 2016-10-12 → 2016-10-13 (+1d) | 2016-10-18 → 2016-10-19 (+1d) |  |  |  |
| 46 | Manufacture the volume of product planned to meet sales objectives. | 2016-11-24 → 2016-11-25 (+1d) | 2017-01-05 → 2017-01-06 (+1d) |  |  |  |
| 47 | **Sales** | 2016-11-17 → 2016-11-18 (+1d) | 2016-12-01 → 2016-12-02 (+1d) |  |  |  |
| 48 | Hire and train sales staff | 2016-11-17 → 2016-11-18 (+1d) | 2016-12-01 → 2016-12-02 (+1d) |  |  |  |
| 49 | **Product Support** | 2016-12-22 → 2016-12-23 (+1d) | 2017-01-05 → 2017-01-06 (+1d) |  |  |  |
| 50 | Hire and train product support personnel | 2016-12-22 → 2016-12-23 (+1d) | 2017-01-05 → 2017-01-06 (+1d) |  |  |  |
| 51 | **Final Quality Review** | 2017-01-05 → 2017-01-06 (+1d) | 2017-01-10 → 2017-01-11 (+1d) |  |  |  |
| 52 | Conduct final quality review | 2017-01-05 → 2017-01-06 (+1d) | 2017-01-10 → 2017-01-11 (+1d) |  |  |  |
| 53 | Product Release Information Complete | 2017-01-10 → 2017-01-11 (+1d) | 2017-01-10 → 2017-01-11 (+1d) |  |  |  |
| 54 | Needed materials are on order or in stock. | 2017-01-10 → 2017-01-11 (+1d) | 2017-01-10 → 2017-01-11 (+1d) |  |  |  |
| 55 | Literature Complete | 2017-01-10 → 2017-01-11 (+1d) | 2017-01-10 → 2017-01-11 (+1d) |  |  |  |
| 56 | Training Complete | 2017-01-05 → 2017-01-06 (+1d) | 2017-01-05 → 2017-01-06 (+1d) |  |  |  |
| 57 | Launch Product | 2017-01-10 → 2017-01-11 (+1d) | 2017-01-10 → 2017-01-11 (+1d) |  |  |  |

## Version 4 (data date 2016-09-02, saved 2018-06-21, file Activity 4.4 Comparing Progress Against a Baseline-My_Trey_Slide_Presenter_Tracking_c.mpp)

Note of the change: learm-format bar style,critical path , Base line,slippagetracking gantt chart view

Last finish 2017-01-11 → 2017-01-20 (+9d). Complete tasks 1 → 9.

Changed:

| ID | Task | Start | Finish | Duration | Complete | Total float | Other |
| --- | --- | --- | --- | --- | --- | --- | --- |
| 1 | **Phase 1 - High-Level Planning** |  | 2016-08-22 → 2016-08-25 A (+3d) | 16d → 19d | 31% → 100% | 0d → none |  |
| 3 | Define launch goals (launch timing and publicity objectives) | 2016-08-03 A → 2016-08-02 A (-1d) | 2016-08-04 → 2016-08-03 A (-1d) |  | 50% → 100% | 0.75d → none | baseline finish 2016-08-02 → 2016-08-03 |
| 4 | **Establish Launch Budget** | 2016-08-05 A → 2016-08-04 A (-1d) | 2016-08-22 → 2016-08-25 A (+3d) | 12d → 16d | 13% → 100% |  | baseline start 2016-08-03 → 2016-08-04 |
| 5 | Identify budget requirements | 2016-08-05 A → 2016-08-04 A (-1d) | 2016-08-05 → 2016-08-04 A (-1d) |  | 75% → 100% | 0d → none | baseline start 2016-08-03 → 2016-08-04; baseline finish 2016-08-03 → 2016-08-04 |
| 6 | Obtain launch budget approval | 2016-08-15 → 2016-08-12 A (-3d) | 2016-08-22 → 2016-08-25 A (+3d) | 5d → 10d | 0% → 100% | 0d → none | baseline start 2016-08-11 → 2016-08-12 |
| 7 | High-Level Planning Complete | 2016-08-22 → 2016-08-25 A (+3d) | 2016-08-22 → 2016-08-25 A (+3d) |  | 0% → 100% | 0d → none |  |
| 8 | **Phase 2 - Detailed Planning** | 2016-08-23 → 2016-08-26 A (+3d) | 2016-09-08 → 2016-09-19 (+11d) | 12d → 16d | 0% → 52% |  | baseline finish 2016-09-07 → 2016-09-08 |
| 9 | Kickoff product launch | 2016-08-23 → 2016-08-26 A (+3d) | 2016-08-23 → 2016-08-29 A (+6d) | 1d → 2d | 0% → 100% | 0d → none |  |
| 10 | **Marketing** | 2016-08-24 → 2016-08-30 A (+6d) | 2016-08-25 → 2016-09-02 (+8d) | 2d → 4d | 0% → 91% |  |  |
| 11 | Define press release requirements | 2016-08-24 → 2016-08-30 A (+6d) | 2016-08-24 → 2016-08-31 A (+7d) | 1d → 2d | 0% → 100% | 1d → none | baseline finish 2016-08-22 → 2016-08-23 |
| 12 | Define sales presentations | 2016-08-24 → 2016-08-30 A (+6d) | 2016-08-25 → 2016-09-02 (+8d) | 2d → 4d | 0% → 75% |  | resources Juan Madera → Juan Madera; Jeannette Bowman |
| 13 | Define product specification literature | 2016-08-24 → 2016-08-30 A (+6d) | 2016-08-25 → 2016-08-31 A (+6d) |  | 0% → 100% | 0d → none |  |
| 14 | Define internal communication needs | 2016-08-24 → 2016-08-30 A (+6d) | 2016-08-24 → 2016-09-01 A (+8d) | 1d → 3d | 0% → 100% | 1d → none |  |
| 15 | **Engineering** | 2016-08-26 → 2016-09-06 (+11d) | 2016-08-29 → 2016-09-08 (+10d) | 2d → 3d |  |  | baseline finish 2016-08-26 → 2016-08-29 |
| 16 | Align product release timing with marketing plan | 2016-08-26 → 2016-09-06 (+11d) | 2016-08-29 → 2016-09-08 (+10d) | 2d → 3d |  |  | baseline finish 2016-08-26 → 2016-08-29 |
| 17 | **Manufacturing** | 2016-08-30 → 2016-09-09 (+10d) | 2016-08-31 → 2016-09-12 (+12d) |  |  |  | baseline start 2016-08-29 → 2016-08-30; baseline finish 2016-08-30 → 2016-08-31 |
| 18 | Prepare for volume manufacturing according to sales goals | 2016-08-30 → 2016-09-09 (+10d) | 2016-08-31 → 2016-09-12 (+12d) |  |  |  | resources Winston Blanks; Shannon Clemons → Winston Blanks; Shannon Clemons; Jeannette Bowman; baseline start 2016-08-29 → 2016-08-30; baseline finish 2016-08-30 → 2016-08-31 |
| 19 | **Sales** | 2016-09-01 → 2016-09-13 (+12d) | 2016-09-02 → 2016-09-14 (+12d) |  |  |  | baseline start 2016-08-31 → 2016-09-01; baseline finish 2016-09-01 → 2016-09-02 |
| 20 | Plan sales force staffing and training to support sales goals | 2016-09-01 → 2016-09-13 (+12d) | 2016-09-02 → 2016-09-14 (+12d) |  |  |  | baseline start 2016-08-31 → 2016-09-01; baseline finish 2016-09-01 → 2016-09-02 |
| 21 | **Product Support** | 2016-09-06 → 2016-09-15 (+9d) | 2016-09-08 → 2016-09-19 (+11d) |  |  |  | baseline start 2016-09-02 → 2016-09-06; baseline finish 2016-09-07 → 2016-09-08 |
| 22 | Plan team staffing to support sales goals | 2016-09-06 → 2016-09-15 (+9d) | 2016-09-08 → 2016-09-19 (+11d) |  |  |  | baseline start 2016-09-02 → 2016-09-06; baseline finish 2016-09-07 → 2016-09-08 |
| 23 | Detailed Planning Complete | 2016-09-08 → 2016-09-19 (+11d) | 2016-09-08 → 2016-09-19 (+11d) |  |  |  | baseline start 2016-09-07 → 2016-09-08; baseline finish 2016-09-07 → 2016-09-08 |
| 24 | **Phase 3 - Execution** | 2016-09-09 → 2016-09-20 (+11d) | 2016-11-25 → 2016-12-06 (+11d) |  |  |  | baseline start 2016-09-08 → 2016-09-09; baseline finish 2016-11-24 → 2016-11-25 |
| 25 | **Marketing** | 2016-09-09 → 2016-09-20 (+11d) | 2016-10-10 → 2016-10-19 (+9d) |  |  |  | baseline start 2016-09-08 → 2016-09-09; baseline finish 2016-10-07 → 2016-10-10 |
| 26 | Evaluate market and refine messaging | 2016-09-09 → 2016-09-20 (+11d) | 2016-09-09 → 2016-09-20 (+11d) |  |  |  | baseline start 2016-09-08 → 2016-09-09; baseline finish 2016-09-08 → 2016-09-09 |
| 27 | Create press releases | 2016-09-12 → 2016-09-21 (+9d) | 2016-09-13 → 2016-09-22 (+9d) |  |  |  | baseline start 2016-09-09 → 2016-09-12; baseline finish 2016-09-12 → 2016-09-13 |
| 28 | Create product specification literature | 2016-09-14 → 2016-09-23 (+9d) | 2016-09-20 → 2016-09-29 (+9d) |  |  |  | baseline start 2016-09-13 → 2016-09-14; baseline finish 2016-09-19 → 2016-09-20 |
| 29 | Create sales presentations | 2016-09-21 → 2016-09-30 (+9d) | 2016-09-27 → 2016-10-06 (+9d) |  |  |  | baseline start 2016-09-20 → 2016-09-21; baseline finish 2016-09-26 → 2016-09-27 |
| 30 | Create sales, field, and product support training | 2016-09-28 → 2016-10-07 (+9d) | 2016-10-04 → 2016-10-13 (+9d) |  |  |  | baseline start 2016-09-27 → 2016-09-28; baseline finish 2016-10-03 → 2016-10-04 |
| 31 | Update product forecasts based on market feedback and analysis | 2016-10-05 → 2016-10-14 (+9d) | 2016-10-06 → 2016-10-17 (+11d) |  |  |  | baseline start 2016-10-04 → 2016-10-05; baseline finish 2016-10-05 → 2016-10-06 |
| 32 | Update launch plan based on forecast | 2016-10-07 → 2016-10-18 (+11d) | 2016-10-10 → 2016-10-19 (+9d) |  |  |  | baseline start 2016-10-06 → 2016-10-07; baseline finish 2016-10-07 → 2016-10-10 |
| 33 | **Engineering** | 2016-09-09 → 2016-09-20 (+11d) | 2016-10-20 → 2016-10-31 (+11d) |  |  |  | baseline start 2016-09-08 → 2016-09-09; baseline finish 2016-10-19 → 2016-10-20 |
| 34 | Complete and test product | 2016-09-09 → 2016-09-20 (+11d) | 2016-10-20 → 2016-10-31 (+11d) |  |  |  | baseline start 2016-09-08 → 2016-09-09; baseline finish 2016-10-19 → 2016-10-20 |
| 35 | **Manufacturing** | 2016-10-21 → 2016-11-01 (+11d) | 2016-11-25 → 2016-12-06 (+11d) |  |  |  | baseline start 2016-10-20 → 2016-10-21; baseline finish 2016-11-24 → 2016-11-25 |
| 36 | Create prototype products | 2016-10-21 → 2016-11-01 (+11d) | 2016-11-18 → 2016-11-29 (+11d) |  |  |  | baseline start 2016-10-20 → 2016-10-21; baseline finish 2016-11-17 → 2016-11-18 |
| 37 | Prepare pipeline | 2016-11-18 → 2016-11-29 (+11d) | 2016-11-25 → 2016-12-06 (+11d) |  |  |  | baseline start 2016-11-17 → 2016-11-18; baseline finish 2016-11-24 → 2016-11-25 |
| 38 | **Sales** | 2016-10-07 → 2016-10-18 (+11d) | 2016-10-10 → 2016-10-19 (+9d) |  |  |  | baseline start 2016-10-06 → 2016-10-07; baseline finish 2016-10-07 → 2016-10-10 |
| 39 | Establish sales channels | 2016-10-07 → 2016-10-18 (+11d) | 2016-10-10 → 2016-10-19 (+9d) |  |  |  | baseline start 2016-10-06 → 2016-10-07; baseline finish 2016-10-07 → 2016-10-10 |
| 40 | **Product Support** | 2016-10-11 → 2016-10-20 (+9d) | 2016-10-12 → 2016-10-21 (+9d) |  |  |  | baseline start 2016-10-10 → 2016-10-11; baseline finish 2016-10-11 → 2016-10-12 |
| 41 | Establish product support mechanisms | 2016-10-11 → 2016-10-20 (+9d) | 2016-10-12 → 2016-10-21 (+9d) |  |  |  | baseline start 2016-10-10 → 2016-10-11; baseline finish 2016-10-11 → 2016-10-12 |
| 42 | Execution Phase Complete | 2016-10-12 → 2016-10-21 (+9d) | 2016-10-12 → 2016-10-21 (+9d) |  |  |  | baseline start 2016-10-11 → 2016-10-12; baseline finish 2016-10-11 → 2016-10-12 |
| 43 | **Phase 4 - Release To Manufacture** | 2016-10-13 → 2016-10-24 (+11d) | 2017-01-11 → 2017-01-20 (+9d) |  |  |  | baseline start 2016-10-12 → 2016-10-13; baseline finish 2017-01-10 → 2017-01-11 |
| 44 | **Manufacturing** | 2016-10-13 → 2016-10-24 (+11d) | 2017-01-06 → 2017-01-17 (+11d) |  |  |  | baseline start 2016-10-12 → 2016-10-13; baseline finish 2017-01-05 → 2017-01-06 |
| 45 | Certify product | 2016-10-13 → 2016-10-24 (+11d) | 2016-10-19 → 2016-10-28 (+9d) |  |  |  | baseline start 2016-10-12 → 2016-10-13; baseline finish 2016-10-18 → 2016-10-19 |
| 46 | Manufacture the volume of product planned to meet sales objectives. | 2016-11-25 → 2016-12-06 (+11d) | 2017-01-06 → 2017-01-17 (+11d) |  |  |  | baseline start 2016-11-24 → 2016-11-25; baseline finish 2017-01-05 → 2017-01-06 |
| 47 | **Sales** | 2016-11-18 → 2016-11-29 (+11d) | 2016-12-02 → 2016-12-13 (+11d) |  |  |  | baseline start 2016-11-17 → 2016-11-18; baseline finish 2016-12-01 → 2016-12-02 |
| 48 | Hire and train sales staff | 2016-11-18 → 2016-11-29 (+11d) | 2016-12-02 → 2016-12-13 (+11d) |  |  |  | baseline start 2016-11-17 → 2016-11-18; baseline finish 2016-12-01 → 2016-12-02 |
| 49 | **Product Support** | 2016-12-23 → 2017-01-03 (+11d) | 2017-01-06 → 2017-01-17 (+11d) |  |  |  | baseline start 2016-12-22 → 2016-12-23; baseline finish 2017-01-05 → 2017-01-06 |
| 50 | Hire and train product support personnel | 2016-12-23 → 2017-01-03 (+11d) | 2017-01-06 → 2017-01-17 (+11d) |  |  |  | baseline start 2016-12-22 → 2016-12-23; baseline finish 2017-01-05 → 2017-01-06 |
| 51 | **Final Quality Review** | 2017-01-06 → 2017-01-17 (+11d) | 2017-01-11 → 2017-01-20 (+9d) |  |  |  | baseline start 2017-01-05 → 2017-01-06; baseline finish 2017-01-10 → 2017-01-11 |
| 52 | Conduct final quality review | 2017-01-06 → 2017-01-17 (+11d) | 2017-01-11 → 2017-01-20 (+9d) |  |  |  | baseline start 2017-01-05 → 2017-01-06; baseline finish 2017-01-10 → 2017-01-11 |
| 53 | Product Release Information Complete | 2017-01-11 → 2017-01-20 (+9d) | 2017-01-11 → 2017-01-20 (+9d) |  |  |  | baseline start 2017-01-10 → 2017-01-11; baseline finish 2017-01-10 → 2017-01-11 |
| 54 | Needed materials are on order or in stock. | 2017-01-11 → 2017-01-20 (+9d) | 2017-01-11 → 2017-01-20 (+9d) |  |  |  | baseline start 2017-01-10 → 2017-01-11; baseline finish 2017-01-10 → 2017-01-11 |
| 55 | Literature Complete | 2017-01-11 → 2017-01-20 (+9d) | 2017-01-11 → 2017-01-20 (+9d) |  |  |  | baseline start 2017-01-10 → 2017-01-11; baseline finish 2017-01-10 → 2017-01-11 |
| 56 | Training Complete | 2017-01-06 → 2017-01-17 (+11d) | 2017-01-06 → 2017-01-17 (+11d) |  |  |  | baseline start 2017-01-05 → 2017-01-06; baseline finish 2017-01-05 → 2017-01-06 |
| 57 | Launch Product | 2017-01-11 → 2017-01-20 (+9d) | 2017-01-11 → 2017-01-20 (+9d) |  |  |  | baseline start 2017-01-10 → 2017-01-11; baseline finish 2017-01-10 → 2017-01-11 |
